# 试点项目

Schedule from a web Gantt chart, 2025-04-01 to 2025-04-28.
Saturdays and Sundays are off

## Schedule

| ID | WBS | Task | Duration | Start | Finish |
| --- | --- | --- | --- | --- | --- |
| 2 | 1 | **示范变电站 部署实施工作** | 6d | 2025-04-14 | 2025-04-21 |
| 3 | 1.1 | 预警摄像头安装、人脸识别设备安装 | 4d | 2025-04-16 | 2025-04-21 |
| 4 | 1.2 | 网络贯通联调 | 4d | 2025-04-14 | 2025-04-17 |
| 5 | 2 | 与预警摄像头厂家的智能接口接入开发与测试 | 8d | 2025-04-01 | 2025-04-10 |
| 6 | 3 | 流媒体中台智能接入服务开发 | 6d | 2025-04-07 | 2025-04-14 |
| 7 | 4 | 流媒体中台AI算法代理服务开发 | 7d | 2025-04-07 | 2025-04-15 |
| 8 | 5 | 流媒体中台轮巡抽图服务开发 | 6d | 2025-04-10 | 2025-04-17 |
| 9 | 6 | 流媒体中台风控业务-数据分析与状态服务开发 | 6d | 2025-04-14 | 2025-04-21 |
| 10 | 7 | 风控平台无计划研判预警前端展示界面效果图设计 | 8d | 2025-04-01 | 2025-04-10 |
| 11 | 8 | 风控平台无计划研判预警相关功能开发 | 8d | 2025-04-10 | 2025-04-21 |
| 12 | 9 | 风控平台与流媒体中台、智巡系统的系统间对接联调工作 | 6d | 2025-04-21 | 2025-04-28 |
